# Schedule

How a schedule from MS Project changed from version to version. A marks actual dates.

## Version 1 (saved 2018-02-23)

Note of the change: Added schedule

| ID | WBS | Task | Duration | Start | Finish | Predecessors | Complete | Total float | Constraint |
| --- | --- | --- | --- | --- | --- | --- | --- | --- | --- |
| 1 | 1 | **Project ACIS** | 162d | 2017-12-17 A | 2018-05-28 |  | 8% | 0d |  |
| 2 | 1.1 | **Get Started** | 26.88d | 2017-12-17 A | 2018-01-12 A |  | 100% |  |  |
| 3 |  | Create GitHub Repo | 1d | 2017-12-17 A | 2017-12-17 A |  | 100% |  | finish no earlier than 2017-12-17 |
| 4 |  | Create GitHub Wiki | 1d | 2017-12-17 A | 2017-12-17 A | 3 | 100% |  | start no earlier than 2017-12-17 |
| 5 |  | Create GitHub Tasks | 1d | 2017-12-17 A | 2017-12-17 A | 4 | 100% |  | start no earlier than 2017-12-17 |
| 6 | 1.1.4 | **Meet With Adviser** | 0.88d | 2017-12-19 A | 2017-12-19 A |  | 100% |  |  |
| 7 |  | Add Meeting Notes | 1d | 2017-12-19 A | 2017-12-19 A |  | 100% |  | start no earlier than 2017-12-19 |
| 8 | 1.1.5 | **Meet With Sponsor** | 2.88d | 2018-01-10 A | 2018-01-12 A |  | 100% |  |  |
| 9 |  | Preparing Slides And Questions | 2d | 2018-01-10 A | 2018-01-11 A |  | 100% |  | start no earlier than 2018-01-10 |
| 10 |  | Add Meeting Notes | 1d | 2018-01-12 A | 2018-01-12 A | 9 | 100% |  | start no earlier than 2018-01-12 |
| 11 | 1.2 | **Plan** | 28.12d | 2018-01-26 A | 2018-02-23 |  | 25% | 93.88d |  |
| 12 | 1.2.1 | **Requirements** | 6d | 2018-01-26 A | 2018-01-31 A |  | 100% |  |  |
| 13 |  | Write Project Schedule Draft | 1d | 2018-01-26 A | 2018-01-26 A |  | 100% |  | start no earlier than 2018-01-26 |
| 14 |  | Review Project Schedule Draft | 1d | 2018-01-27 A | 2018-01-27 A | 13 | 100% |  |  |
| 15 |  | Revise Project Schedule Draft | 1d | 2018-01-28 A | 2018-01-28 A | 14 | 100% |  |  |
| 16 |  | Review Revised Project Schedule | 1d | 2018-01-29 A | 2018-01-29 A | 15 | 100% |  |  |
| 17 |  | Approve Project Schedule | 1d | 2018-01-30 A | 2018-01-30 A | 16 | 100% |  |  |
| 18 |  | Submit Project Schedule | 1d | 2018-01-31 A | 2018-01-31 A | 17 | 100% |  |  |
| 19 | 1.2.2 | **Project Schedule** | 2d | 2018-02-18 | 2018-02-20 |  |  | 97d |  |
| 20 |  | Write Project Schedule Draft | 1d | 2018-02-18 | 2018-02-18 |  |  | 97d | start no earlier than 2018-02-18 |
| 21 |  | Review Project Schedule Draft | 1d | 2018-02-18 | 2018-02-19 | 20 |  | 97d |  |
| 22 |  | Revise Project Schedule Draft | 1d | 2018-02-19 | 2018-02-19 | 21 |  | 97d |  |
| 23 |  | Review Revised Project Schedule | 1d | 2018-02-19 | 2018-02-19 | 22 |  | 97d |  |
| 24 |  | Approve Project Schedule | 1d | 2018-02-19 | 2018-02-20 | 23 |  | 97d |  |
| 25 |  | Submit Project Schedule | 1d | 2018-02-20 | 2018-02-20 | 24 |  | 97d |  |
| 26 | 1.2.3 | **Block Diagram** | 6.12d | 2018-02-17 | 2018-02-23 |  |  | 93d |  |
| 27 |  | Create High Level Block Diagram | 1.12d | 2018-02-17 | 2018-02-17 |  |  | 93d |  |
| 28 |  | Create Component Level Block Diagram | 1d | 2018-02-17 | 2018-02-18 | 27 |  | 93d |  |
| 29 |  | Create Motor Block Diagram | 0.62d | 2018-02-18 | 2018-02-18 | 28 |  | 93d |  |
| 30 |  | Create Sensor Sensor Block Diagram | 1d | 2018-02-18 | 2018-02-19 | 29 |  | 93d |  |
| 31 |  | Create Processor Block Diagram | 0.62d | 2018-02-19 | 2018-02-19 | 30 |  | 93d |  |
| 32 |  | Create Lights Block Diagram | 1d | 2018-02-19 | 2018-02-20 | 31 |  | 93d |  |
| 33 |  | Create Software Block Diagram | 0.62d | 2018-02-20 | 2018-02-20 | 32 |  | 93d |  |
| 34 |  | Review Block Diagrams | 1d | 2018-02-20 | 2018-02-21 | 33 |  | 93d |  |
| 35 |  | Revise Block Diagrams | 1.88d | 2018-02-21 | 2018-02-21 | 34 |  | 93.88d |  |
| 36 |  | Approve Block Diagrams | 2d | 2018-02-21 | 2018-02-22 | 35 |  | 93.88d |  |
| 37 |  | Submit Block Diagrams | 1.12d | 2018-02-22 | 2018-02-23 | 36 |  | 93.88d |  |
| 38 | 1.3 | **Barcode Detection** | 32d | 2018-02-01 A | 2018-03-04 |  | 50% | 84d |  |
| 39 |  | Research Barcode Detection Libraries | 10d | 2018-02-01 A | 2018-02-09 |  | 79% | 103d | start no earlier than 2018-02-01 |
| 40 |  | Prototype OpenCV Barcode Detection | 3.88d | 2018-02-09 | 2018-02-11 | 39 |  | 103d |  |
| 41 |  | Finalize OpenCV Barcode Detection | 2d | 2018-03-03 | 2018-03-04 | 40 |  | 84d | start no earlier than 2018-03-03 |
| 42 | 1.4 | **Image Stitching** | 59d | 2018-01-13 | 2018-03-12 |  |  | 76d |  |
| 43 |  | Research Methods To Use OpenCV For Image Stitching | 21d | 2018-01-13 | 2018-02-02 |  |  | 114d | start no earlier than 2018-01-13 |
| 44 |  | Prototype OpenCV Image Stitching | 2d | 2018-02-10 | 2018-02-11 | 43 |  | 105d | start no earlier than 2018-02-10 |
| 45 |  | Finalize OpenCV Image Stitching | 3d | 2018-03-10 | 2018-03-12 | 44 |  | 76d | start no earlier than 2018-03-10 |
| 46 | 1.5 | **Defect Detection** | 91d | 2018-01-03 | 2018-04-03 |  |  | 54d |  |
| 47 |  | Research OpenCV Defect Detection | 2d | 2018-01-03 | 2018-01-04 |  |  | 138d | start no earlier than 2018-01-03 |
| 48 |  | Prototype OpenCV Defect Detection | 5d | 2018-01-05 | 2018-01-09 | 47 |  | 138d |  |
| 49 |  | Finalize OpenCV Defect Detection | 3d | 2018-04-01 | 2018-04-03 | 48 |  | 54d | start no earlier than 2018-04-01 |
| 50 | 1.6 | **Main Application** | 6d | 2018-03-29 | 2018-04-04 |  |  | 54d |  |
| 51 |  | Research What Control Should Main Application Have | 2d | 2018-03-29 | 2018-03-30 |  |  | 54d | start no earlier than 2018-03-29 |
| 52 |  | Design Main Application | 6d | 2018-03-30 | 2018-04-01 | 51 |  | 54d |  |
| 53 |  | Design The Different components Of The Application | 1d | 2018-04-01 | 2018-04-01 | 52 |  | 54d |  |
| 54 |  | Design Config File | 1d | 2018-04-01 | 2018-04-01 | 53 |  | 54d |  |
| 55 |  | Design The Interface Between The Classes | 1d | 2018-04-01 | 2018-04-02 | 54 |  | 54d |  |
| 56 |  | Prototype Main Application | 5d | 2018-04-02 | 2018-04-03 | 55 |  | 54d |  |
| 57 |  | Finalize Main Application | 2d | 2018-04-03 | 2018-04-04 | 56 |  | 54d |  |
| 58 | 1.7 | **Magazine** | 18.75d | 2018-03-28 | 2018-04-15 |  |  | 42.25d |  |
| 59 |  | Research Magazine Design | 2d | 2018-03-28 | 2018-03-29 |  |  | 49d | start no earlier than 2018-03-28 |
| 60 |  | Design The Magazine | 1d | 2018-03-29 | 2018-03-30 | 59 |  | 49d |  |
| 61 |  | Design Safety Locks | 1d | 2018-03-30 | 2018-03-31 | 60 |  | 49d |  |
| 62 |  | Design CPU Holding Frame | 1d | 2018-03-31 | 2018-03-31 | 61 |  | 49d |  |
| 63 |  | Design Magazine Movement | 1d | 2018-03-31 | 2018-03-31 | 62 |  | 49d |  |
| 64 |  | Design Magazine Loading Mechanism | 1d | 2018-03-31 | 2018-04-01 | 63 |  | 49d |  |
| 65 |  | Research Magazine Parts | 2d | 2018-04-01 | 2018-04-01 | 64 |  | 49d |  |
| 66 |  | Order Magazine Parts | 1d | 2018-04-01 | 2018-04-02 | 65 |  | 49d |  |
| 67 |  | Prototype Magazine | 5d | 2018-04-09 | 2018-04-13 | 66 |  | 42.25d | start no earlier than 2018-04-09 |
| 68 |  | Finalize Magazine | 2.75d | 2018-04-13 | 2018-04-15 | 67 |  | 42.25d |  |
| 69 | 1.8 | **Frame** | 88d | 2018-01-27 | 2018-04-25 |  |  | 33d |  |
| 70 |  | Design The Frame | 4d | 2018-01-27 | 2018-01-28 |  |  | 118.12d | start no earlier than 2018-01-27 |

| ID | WBS | Task | Duration | Start | Finish | Predecessors | Total float | Constraint |
| --- | --- | --- | --- | --- | --- | --- | --- | --- |
| 71 |  | Research Frame Parts | 1d | 2018-01-28 | 2018-01-29 | 70 | 118.12d |  |
| 72 |  | Order Frame Parts | 2d | 2018-01-29 | 2018-01-29 | 71 | 118.12d |  |
| 73 |  | Prototype Frame | 5d | 2018-03-05 | 2018-03-07 |  | 82d | start no earlier than 2018-03-05 |
| 74 |  | Finalize Frame Build | 5d | 2018-04-23 | 2018-04-25 |  | 33d | start no earlier than 2018-04-23 |
| 75 | 1.9 | **Lighting** | 11d | 2018-04-06 | 2018-04-16 |  | 41d |  |
| 76 |  | Research Lighting | 1d | 2018-04-06 | 2018-04-06 |  | 50d | start no earlier than 2018-04-06 |
| 77 |  | Design Lighting | 2d | 2018-04-06 | 2018-04-07 | 76 | 50d |  |
| 78 |  | Order Lighting Parts | 1d | 2018-04-07 | 2018-04-08 | 77 | 50d |  |
| 79 |  | Prototype Lighting Parts | 2d | 2018-04-14 | 2018-04-15 |  | 41d | start no earlier than 2018-04-14 |
| 80 |  | Finalize Lighting | 2d | 2018-04-15 | 2018-04-16 | 79 | 41d |  |
| 81 | 1.10 | **Enclosure** | 9d | 2018-04-01 | 2018-04-10 |  | 48d |  |
| 82 |  | Research Enclosure Material | 1d | 2018-04-01 | 2018-04-01 |  | 54.12d | start no earlier than 2018-04-01 |
| 83 |  | Design Enclosure | 3d | 2018-04-01 | 2018-04-02 | 82 | 54.12d |  |
| 84 |  | Order Enclosure Material | 1d | 2018-04-08 | 2018-04-08 | 83 | 48.12d | start no earlier than 2018-04-08 |
| 85 |  | Prototype Enclosure | 2d | 2018-04-09 | 2018-04-10 | 84 | 48d | start no earlier than 2018-04-09 |
| 86 |  | Finalize Enclosure | 1d | 2018-04-10 | 2018-04-10 | 85 | 48d |  |
| 87 | 1.11 | **Motor** | 104d | 2018-01-01 | 2018-04-14 |  | 43d |  |
| 88 |  | Research Arduino Motor Control | 5d | 2018-01-01 | 2018-01-05 |  | 131d | start no earlier than 2018-01-01 |
| 89 |  | Design Stepper Motor Placement | 1d | 2018-01-28 | 2018-01-28 | 88 | 108.12d | start no earlier than 2018-01-28 |
| 90 |  | Choose Motors | 2d | 2018-01-29 | 2018-01-30 | 89 | 108d | start no earlier than 2018-01-29 |
| 91 |  | Order Motors | 1d | 2018-01-30 | 2018-01-30 | 90 | 107.12d | start no earlier than 2018-01-30 |
| 92 |  | Prototype Motor Drivers | 5d | 2018-04-05 | 2018-04-09 | 91 | 43d | start no earlier than 2018-04-05 |
| 93 |  | Finalize Motor Driver | 5d | 2018-04-10 | 2018-04-14 | 92 | 43d | finish no earlier than 2018-02-19 |
| 94 | 1.12 | **Image Capturing** | 9.88d | 2018-03-28 | 2018-04-06 |  | 51.12d |  |
| 95 |  | Research Camera | 1d | 2018-03-28 | 2018-03-28 |  | 58.12d | start no earlier than 2018-03-28 |
| 96 |  | Order Camera | 1d | 2018-04-04 | 2018-04-04 | 95 | 51.25d | start no earlier than 2018-04-04 |
| 97 |  | Finalize Image Capturing | 2d | 2018-04-05 | 2018-04-06 | 96 | 51.12d | start no earlier than 2018-04-05 |
| 98 | 1.13 | **Communication Between Arduino And Pc** | 2.88d | 2018-04-25 | 2018-04-27 |  | 30.12d |  |
| 99 |  | Design The Protocol Between Main Application And Arduino | 3d | 2018-04-25 | 2018-04-26 |  | 31d | start no earlier than 2018-04-25 |
| 100 |  | Prototype Communication Between Arduino And Pc | 2d | 2018-04-26 | 2018-04-27 | 99 | 30.88d |  |
| 101 |  | Finalize Communication Between Pc And Arduino | 2d | 2018-04-27 | 2018-04-27 | 100 | 30.12d |  |
| 102 | 1.14 | **Power Supply** | 18d | 2018-04-07 | 2018-04-25 |  | 33d |  |
| 103 |  | Calculate Power Requirements Based On Parts | 2d | 2018-04-07 | 2018-04-08 |  | 46.12d | start no earlier than 2018-04-07 |
| 104 |  | Research Power Supply | 2d | 2018-04-08 | 2018-04-09 | 103 | 46.12d | start no earlier than 2018-03-24 |
| 105 |  | Order Power Supply | 1d | 2018-04-16 | 2018-04-16 | 104 | 39.12d | start no earlier than 2018-04-16 |
| 106 |  | Test Power Supply | 2d | 2018-04-23 | 2018-04-24 | 105 | 33d | start no earlier than 2018-04-23 |
| 107 |  | Finalize Power Supply | 1d | 2018-04-24 | 2018-04-25 | 106 | 33d |  |
| 108 | 1.15 | **Safety Locks** | 12d | 2018-04-23 | 2018-05-04 |  | 23d |  |
| 109 |  | Research Safety Locks | 2d | 2018-04-23 | 2018-04-24 |  | 30d | start no earlier than 2018-04-23 |
| 110 |  | Order Safety Locks Parts | 1d | 2018-04-25 | 2018-04-25 | 109 | 30d |  |
| 111 |  | Prototype Safety Locks | 1d | 2018-05-03 | 2018-05-03 | 110 | 23d | start no earlier than 2018-05-03 |
| 112 |  | Finalize Safety Locks | 1d | 2018-05-04 | 2018-05-04 | 111 | 23d |  |
| 113 | 1.16 | **Sensors** | 5d | 2018-03-18 | 2018-03-22 |  | 66d |  |
| 114 |  | Research Sensors | 2d | 2018-03-18 | 2018-03-19 |  | 66d | start no earlier than 2018-03-18 |
| 115 |  | Order Sensors | 1d | 2018-03-20 | 2018-03-20 | 114 | 66d |  |
| 116 |  | Prototype Sensors Software | 1d | 2018-03-21 | 2018-03-21 | 115 | 66d |  |
| 117 |  | Finalize Sensors | 1d | 2018-03-22 | 2018-03-22 | 116 | 66d |  |
| 118 | 1.17 | **First Term Project Assessment** | 2.25d | 2018-03-23 | 2018-03-25 |  | 63.75d |  |
| 119 |  | Write First Term Project Assessment Draft | 1.12d | 2018-03-23 | 2018-03-23 |  | 63.75d | start no earlier than 2018-03-23 |
| 120 |  | Review First Term Project Assessment Draft | 0.5d | 2018-03-23 | 2018-03-24 | 119 | 63.75d |  |
| 121 |  | Revise First Term Project Assessment Draft | 0.25d | 2018-03-24 | 2018-03-24 | 120 | 63.75d |  |
| 122 |  | Review First Term Project Assessment Document | 0.38d | 2018-03-24 | 2018-03-24 | 121 | 63.75d |  |
| 123 |  | Approve First Term Project Assessment Document | 0.25d | 2018-03-24 | 2018-03-24 | 122 | 63.75d |  |
| 124 |  | Submit First Term Project Assessment Document | 0.5d | 2018-03-24 | 2018-03-25 | 123 | 63.75d |  |
| 125 | 1.18 | **Test** | 3d | 2018-04-30 | 2018-05-03 |  | 25d |  |
| 126 |  | Unit Testing | 2d | 2018-04-30 | 2018-05-01 |  | 25d | start no earlier than 2018-04-30 |
| 127 |  | UI Testing | 2d | 2018-05-01 | 2018-05-01 | 126 | 25d |  |
| 128 |  | Integration Testing | 2d | 2018-05-01 | 2018-05-02 | 127 | 25.12d |  |
| 129 |  | System Testing | 2d | 2018-05-02 | 2018-05-03 | 128 | 25d |  |
| 130 | 1.19 | **Product Documentation** | 5d | 2018-05-06 | 2018-05-10 |  | 17d |  |
| 131 |  | Write Product Documentation Draft | 1.12d | 2018-05-06 | 2018-05-06 |  | 17d | start no earlier than 2018-05-06 |
| 132 |  | Review Product Documentation Draft | 2d | 2018-05-06 | 2018-05-07 | 131 | 17d |  |
| 133 |  | Revise Product Documentation Draft | 2d | 2018-05-07 | 2018-05-08 | 132 | 17d |  |
| 134 |  | Review Product Documentation Schedule | 2d | 2018-05-08 | 2018-05-09 | 133 | 17d |  |
| 135 |  | Approve Product Documentation | 2d | 2018-05-09 | 2018-05-10 | 134 | 17d |  |
| 136 |  | Submit Product Documentation | 0d | 2018-05-10 | 2018-05-10 | 135 | 17d |  |
| 137 | 1.20 | **Project Report** | 10d | 2018-05-14 | 2018-05-23 |  | 4d |  |
| 138 |  | Write Project Report Draft | 3d | 2018-05-14 | 2018-05-15 |  | 4d | start no earlier than 2018-05-14 |
| 139 |  | Review Project Report Draft | 3.88d | 2018-05-15 | 2018-05-17 | 138 | 4d |  |
| 140 |  | Revise Project Report Draft | 3.88d | 2018-05-17 | 2018-05-19 | 139 | 4d |  |

| ID | WBS | Task | Duration | Start | Finish | Predecessors | Total float | Constraint |
| --- | --- | --- | --- | --- | --- | --- | --- | --- |
| 141 |  | Review Project Report Document | 3.88d | 2018-05-19 | 2018-05-21 | 140 | 4d |  |
| 142 |  | Approve Project Report Document | 3.88d | 2018-05-21 | 2018-05-23 | 141 | 4d |  |
| 143 |  | Submit Project Report Document | 0d | 2018-05-23 | 2018-05-23 | 142 | 4d |  |
| 144 | 1.21 | **Final Project Assessment** | 13d | 2018-05-14 | 2018-05-26 |  | 1d |  |
| 145 |  | Write Final Term Project Assessment Draft | 8d | 2018-05-14 | 2018-05-18 |  | 1d | start no earlier than 2018-05-14 |
| 146 |  | Review Final Term Project Assessment Draft | 3.88d | 2018-05-18 | 2018-05-20 | 145 | 1d |  |
| 147 |  | Revise Final Term Project Assessment Draft | 3.88d | 2018-05-20 | 2018-05-22 | 146 | 1d |  |
| 148 |  | Review Final Term Project Assessment Document | 3.88d | 2018-05-22 | 2018-05-24 | 147 | 1d |  |
| 149 |  | Approve Final Term Project Assessment Document | 3.88d | 2018-05-24 | 2018-05-26 | 148 | 1d |  |
| 150 |  | Submit Final Term Project Assessment Document | 0d | 2018-05-26 | 2018-05-26 | 149 | 1d |  |
| 151 | 1.22 | **Project Poster** | 27d | 2018-05-01 | 2018-05-28 |  | 0d |  |
| 152 |  | Design Project Poster | 3d | 2018-05-01 | 2018-05-02 |  | 19d | start no earlier than 2018-05-01 |
| 153 |  | Do Project Poster | 7d | 2018-05-02 | 2018-05-06 | 152 | 19d |  |
| 154 |  | Revise Project Poster | 2d | 2018-05-06 | 2018-05-07 | 153 | 19d |  |
| 155 |  | Review Project Poster | 1d | 2018-05-07 | 2018-05-08 | 154 | 19d |  |
| 156 |  | Approve Project Poster | 0.62d | 2018-05-08 | 2018-05-08 | 155 | 19d |  |
| 157 |  | Submit Project Poster | 0d | 2018-05-28 | 2018-05-28 | 156 | 0d | start no earlier than 2018-05-28 |

## Version 2 (saved 2018-03-28)

Note of the change: Updated schedule

Last finish stays 2018-05-28. Complete tasks 12 → 51.

Changed:

| ID | Task | Start | Finish | Complete | Total float |
| --- | --- | --- | --- | --- | --- |
| 1 | **Project ACIS** |  |  | 8% → 37% |  |
| 11 | **Plan** |  | 2018-02-23 A | 25% → 100% | 93.88d → none |
| 19 | **Project Schedule** | 2018-02-18 A | 2018-02-20 A | 0% → 100% | 97d → none |
| 20 | Write Project Schedule Draft | 2018-02-18 A | 2018-02-18 A | 0% → 100% | 97d → none |
| 21 | Review Project Schedule Draft | 2018-02-18 A | 2018-02-19 A | 0% → 100% | 97d → none |
| 22 | Revise Project Schedule Draft | 2018-02-19 A | 2018-02-19 A | 0% → 100% | 97d → none |
| 23 | Review Revised Project Schedule | 2018-02-19 A | 2018-02-19 A | 0% → 100% | 97d → none |
| 24 | Approve Project Schedule | 2018-02-19 A | 2018-02-20 A | 0% → 100% | 97d → none |
| 25 | Submit Project Schedule | 2018-02-20 A | 2018-02-20 A | 0% → 100% | 97d → none |
| 26 | **Block Diagram** | 2018-02-17 A | 2018-02-23 A | 0% → 100% | 93d → none |
| 27 | Create High Level Block Diagram | 2018-02-17 A | 2018-02-17 A | 0% → 100% | 93d → none |
| 28 | Create Component Level Block Diagram | 2018-02-17 A | 2018-02-18 A | 0% → 100% | 93d → none |
| 29 | Create Motor Block Diagram | 2018-02-18 A | 2018-02-18 A | 0% → 100% | 93d → none |
| 30 | Create Sensor Sensor Block Diagram | 2018-02-18 A | 2018-02-19 A | 0% → 100% | 93d → none |
| 31 | Create Processor Block Diagram | 2018-02-19 A | 2018-02-19 A | 0% → 100% | 93d → none |
| 32 | Create Lights Block Diagram | 2018-02-19 A | 2018-02-20 A | 0% → 100% | 93d → none |
| 33 | Create Software Block Diagram | 2018-02-20 A | 2018-02-20 A | 0% → 100% | 93d → none |
| 34 | Review Block Diagrams | 2018-02-20 A | 2018-02-21 A | 0% → 100% | 93d → none |
| 35 | Revise Block Diagrams | 2018-02-21 A | 2018-02-21 A | 0% → 100% | 93.88d → none |
| 36 | Approve Block Diagrams | 2018-02-21 A | 2018-02-22 A | 0% → 100% | 93.88d → none |
| 37 | Submit Block Diagrams | 2018-02-22 A | 2018-02-23 A | 0% → 100% | 93.88d → none |
| 38 | **Barcode Detection** |  |  | 50% → 87% |  |
| 39 | Research Barcode Detection Libraries |  | 2018-02-09 A | 79% → 100% | 103d → none |
| 40 | Prototype OpenCV Barcode Detection | 2018-02-09 A | 2018-02-11 A | 0% → 100% | 103d → none |
| 42 | **Image Stitching** | 2018-01-13 A |  | 0% → 88% |  |
| 43 | Research Methods To Use OpenCV For Image Stitching | 2018-01-13 A | 2018-02-02 A | 0% → 100% | 114d → none |
| 44 | Prototype OpenCV Image Stitching | 2018-02-10 A | 2018-02-11 A | 0% → 100% | 105d → none |
| 69 | **Frame** | 2018-01-27 A |  | 0% → 71% |  |
| 70 | Design The Frame | 2018-01-27 A | 2018-01-28 A | 0% → 100% | 118.12d → none |
| 71 | Research Frame Parts | 2018-01-28 A | 2018-01-29 A | 0% → 100% | 118.12d → none |
| 72 | Order Frame Parts | 2018-01-29 A | 2018-01-29 A | 0% → 100% | 118.12d → none |
| 73 | Prototype Frame | 2018-03-05 A | 2018-03-07 A | 0% → 100% | 82d → none |
| 87 | **Motor** | 2018-01-01 A |  | 0% → 74% |  |
| 88 | Research Arduino Motor Control | 2018-01-01 A | 2018-01-05 A | 0% → 100% | 131d → none |
| 89 | Design Stepper Motor Placement | 2018-01-28 A | 2018-01-28 A | 0% → 100% | 108.12d → none |
| 90 | Choose Motors | 2018-01-29 A | 2018-01-30 A | 0% → 100% | 108d → none |
| 91 | Order Motors | 2018-01-30 A | 2018-01-30 A | 0% → 100% | 107.12d → none |
| 92 | Prototype Motor Drivers | 2018-04-05 A | 2018-04-09 A | 0% → 100% | 43d → none |
| 113 | **Sensors** | 2018-03-18 A |  | 0% → 80% |  |
| 114 | Research Sensors | 2018-03-18 A | 2018-03-19 A | 0% → 100% | 66d → none |
| 115 | Order Sensors | 2018-03-20 A | 2018-03-20 A | 0% → 100% | 66d → none |
| 116 | Prototype Sensors Software | 2018-03-21 A | 2018-03-21 A | 0% → 100% | 66d → none |
| 118 | **First Term Project Assessment** | 2018-03-23 A | 2018-03-25 A | 0% → 100% | 63.75d → none |
| 119 | Write First Term Project Assessment Draft | 2018-03-23 A | 2018-03-23 A | 0% → 100% | 63.75d → none |
| 120 | Review First Term Project Assessment Draft | 2018-03-23 A | 2018-03-24 A | 0% → 100% | 63.75d → none |
| 121 | Revise First Term Project Assessment Draft | 2018-03-24 A | 2018-03-24 A | 0% → 100% | 63.75d → none |
| 122 | Review First Term Project Assessment Document | 2018-03-24 A | 2018-03-24 A | 0% → 100% | 63.75d → none |
| 123 | Approve First Term Project Assessment Document | 2018-03-24 A | 2018-03-24 A | 0% → 100% | 63.75d → none |
| 124 | Submit First Term Project Assessment Document | 2018-03-24 A | 2018-03-25 A | 0% → 100% | 63.75d → none |

## Version 3 (saved 2018-05-15)

Note of the change: Merge branch 'master' into DemoDay2Temp

Last finish stays 2018-05-28. Complete tasks 51 → 74.

Changed:

| ID | Task | Start | Finish | Complete | Total float |
| --- | --- | --- | --- | --- | --- |
| 1 | **Project ACIS** |  |  | 37% → 55% |  |
| 50 | **Main Application** | 2018-03-29 A |  | 0% → 89% |  |
| 51 | Research What Control Should Main Application Have | 2018-03-29 A | 2018-03-30 A | 0% → 100% | 54d → none |
| 52 | Design Main Application | 2018-03-30 A | 2018-04-01 A | 0% → 100% | 54d → none |
| 53 | Design The Different components Of The Application | 2018-04-01 A | 2018-04-01 A | 0% → 100% | 54d → none |
| 54 | Design Config File | 2018-04-01 A | 2018-04-01 A | 0% → 100% | 54d → none |
| 55 | Design The Interface Between The Classes | 2018-04-01 A | 2018-04-02 A | 0% → 100% | 54d → none |
| 56 | Prototype Main Application | 2018-04-02 A | 2018-04-03 A | 0% → 100% | 54d → none |
| 58 | **Magazine** | 2018-03-28 A |  | 0% → 75% |  |
| 59 | Research Magazine Design | 2018-03-28 A | 2018-03-29 A | 0% → 100% | 49d → none |
| 60 | Design The Magazine | 2018-03-29 A | 2018-03-30 A | 0% → 100% | 49d → none |
| 61 | Design Safety Locks | 2018-03-30 A | 2018-03-31 A | 0% → 100% | 49d → none |
| 62 | Design CPU Holding Frame | 2018-03-31 A | 2018-03-31 A | 0% → 100% | 49d → none |
| 63 | Design Magazine Movement | 2018-03-31 A | 2018-03-31 A | 0% → 100% | 49d → none |
| 64 | Design Magazine Loading Mechanism | 2018-03-31 A | 2018-04-01 A | 0% → 100% | 49d → none |
| 65 | Research Magazine Parts | 2018-04-01 A | 2018-04-01 A | 0% → 100% | 49d → none |
| 66 | Order Magazine Parts | 2018-04-01 A |  | 0% → 99% | 49d → 10.19d |
| 67 | Prototype Magazine | 2018-04-09 A |  | 0% → 66% |  |
| 81 | **Enclosure** | 2018-04-01 A |  | 0% → 81% |  |
| 82 | Research Enclosure Material | 2018-04-01 A | 2018-04-01 A | 0% → 100% | 54.12d → none |
| 83 | Design Enclosure | 2018-04-01 A | 2018-04-02 A | 0% → 100% | 54.12d → none |
| 84 | Order Enclosure Material | 2018-04-08 A | 2018-04-08 A | 0% → 100% | 48.12d → none |
| 85 | Prototype Enclosure | 2018-04-09 A |  | 0% → 75% |  |
| 98 | **Communication Between Arduino And Pc** | 2018-04-25 A | 2018-04-27 A | 0% → 100% | 30.12d → none |
| 99 | Design The Protocol Between Main Application And Arduino | 2018-04-25 A | 2018-04-26 A | 0% → 100% | 31d → none |
| 100 | Prototype Communication Between Arduino And Pc | 2018-04-26 A | 2018-04-27 A | 0% → 100% | 30.88d → none |
| 101 | Finalize Communication Between Pc And Arduino | 2018-04-27 A | 2018-04-27 A | 0% → 100% | 30.12d → none |
| 102 | **Power Supply** | 2018-04-07 A |  | 0% → 63% |  |
| 103 | Calculate Power Requirements Based On Parts | 2018-04-07 A | 2018-04-08 A | 0% → 100% | 46.12d → none |
| 104 | Research Power Supply | 2018-04-08 A | 2018-04-09 A | 0% → 100% | 46.12d → none |
| 105 | Order Power Supply | 2018-04-16 A | 2018-04-16 A | 0% → 100% | 39.12d → none |
| 151 | **Project Poster** | 2018-05-01 A |  | 0% → 22% |  |
| 152 | Design Project Poster | 2018-05-01 A | 2018-05-02 A | 0% → 100% | 19d → none |

## Version 4 (saved 2018-05-24)

Note of the change: Updated block diagrams and schedule

Last finish stays 2018-05-28. Complete tasks 74 → 83.

Changed:

| ID | Task | Start | Finish | Complete | Total float |
| --- | --- | --- | --- | --- | --- |
| 1 | **Project ACIS** |  |  | 55% → 62% |  |
| 58 | **Magazine** |  |  | 75% → 85% |  |
| 66 | Order Magazine Parts |  | 2018-04-02 A | 99% → 100% | 10.19d → none |
| 67 | Prototype Magazine |  | 2018-04-13 A | 66% → 100% | 42.25d → none |
| 75 | **Lighting** | 2018-04-06 A |  | 0% → 75% |  |
| 76 | Research Lighting | 2018-04-06 A | 2018-04-06 A | 0% → 100% | 50d → none |
| 77 | Design Lighting | 2018-04-06 A | 2018-04-07 A | 0% → 100% | 50d → none |
| 78 | Order Lighting Parts | 2018-04-07 A | 2018-04-08 A | 0% → 100% | 50d → none |
| 79 | Prototype Lighting Parts | 2018-04-14 A | 2018-04-15 A | 0% → 100% | 41d → none |
| 108 | **Safety Locks** | 2018-04-23 A |  | 0% → 40% |  |
| 109 | Research Safety Locks | 2018-04-23 A | 2018-04-24 A | 0% → 100% | 30d → none |
| 151 | **Project Poster** |  |  | 22% → 88% |  |
| 153 | Do Project Poster | 2018-05-02 A | 2018-05-06 A | 0% → 100% | 19d → none |
| 154 | Revise Project Poster | 2018-05-06 A | 2018-05-07 A | 0% → 100% | 19d → none |

## Version 5 (saved 2018-06-16)

Note of the change: Documents

Last finish stays 2018-05-28. Complete tasks 83 → 93.

Changed:

| ID | Task | Start | Finish | Complete | Total float |
| --- | --- | --- | --- | --- | --- |
| 1 | **Project ACIS** |  |  | 62% → 67% |  |
| 75 | **Lighting** |  | 2018-04-16 A | 75% → 100% | 41d → none |
| 80 | Finalize Lighting | 2018-04-15 A | 2018-04-16 A | 0% → 100% | 41d → none |
| 81 | **Enclosure** |  | 2018-04-10 A | 81% → 100% | 48d → none |
| 85 | Prototype Enclosure |  | 2018-04-10 A | 75% → 100% | 48d → none |
| 86 | Finalize Enclosure | 2018-04-10 A | 2018-04-10 A | 0% → 100% | 48d → none |
| 87 | **Motor** |  | 2018-04-14 A | 74% → 100% | 43d → none |
| 93 | Finalize Motor Driver | 2018-04-10 A | 2018-04-14 A | 0% → 100% | 43d → none |
| 102 | **Power Supply** |  | 2018-04-25 A | 63% → 100% | 33d → none |
| 106 | Test Power Supply | 2018-04-23 A | 2018-04-24 A | 0% → 100% | 33d → none |
| 107 | Finalize Power Supply | 2018-04-24 A | 2018-04-25 A | 0% → 100% | 33d → none |
| 113 | **Sensors** |  | 2018-03-22 A | 80% → 100% | 66d → none |
| 117 | Finalize Sensors | 2018-03-22 A | 2018-03-22 A | 0% → 100% | 66d → none |
| 151 | **Project Poster** |  | 2018-05-28 A | 88% → 100% | 0d → none |
| 155 | Review Project Poster | 2018-05-07 A | 2018-05-08 A | 0% → 100% | 19d → none |
| 156 | Approve Project Poster | 2018-05-08 A | 2018-05-08 A | 0% → 100% | 19d → none |
| 157 | Submit Project Poster | 2018-05-28 A | 2018-05-28 A | 0% → 100% | 0d → none |
